Schedule from MS Project, 2019-08-29 to 2019-09-24.
Microsoft

## Calendars

- 标准: Mon-Fri 08:00-12:00, 13:00-17:00; Sat-Sun off.

## Resources

| Resource |
| --- |
| 阳海峰 |
| 黄世泉 |
| 黄世泉 江乐兵 |
| 陈藏宝 |
| 黄世泉 服务端 |
| 陈藏宝 服务端 |
| 阳海峰 服务端 |
| 服务端 |
| 赵灵汉 |
| 赵灵汉 产品 |
| 梅雨 |
| 梅雨 代运超 |
| 张骞 赵亚 |
| 杨凯毅 黄世泉 |
| 杨凯毅 代运超 梅雨 |
| 陈藏宝 阳海峰 |
| 阳海峰 陈藏宝 |
| 代运超 张骞 |
| 梅雨 赵亚 |
| 代运超 |
| 代运超 梅雨 |
| 赵亚 梅雨 |
| 赵亚 张骞 陈藏宝 |
| 代运超 梅雨 阳海峰 |
| 赵亚 梅雨 黄世泉 |
| 张骞 |
| 江乐兵 宋高飞 |
| 陈东东 史安良 |
| 产品经理 |
| 杨凯毅 |
| 赵亚 |
| 江乐兵 |
| 宋高飞 |
| 陈东东 |
| 史安良 |
| 陈超 |
| 王正然 |

## Schedule

| ID | WBS | Task | Type | Duration | Start | Finish | Total slack | Resources | Work |
| --- | --- | --- | --- | --- | --- | --- | --- | --- | --- |
| 1 | 1 | **教师端** |  | 17d? | 2019-08-29 | 2019-09-20 |  |  | 1461h |
| 2 | 1.1 | 信令开发 | manual | 3d | 2019-08-30 | 2019-09-03 |  | 江乐兵; 宋高飞 | 48h |
| 3 | 1.2 | **互动工具** |  | 4.88d | 2019-08-29 | 2019-09-04 | 0d |  | 200h |
| 4 | 1.2.1 | PRD/UI | manual | 3d | 2019-08-29 | 2019-08-31 |  | 赵灵汉; 陈超; 王正然 | 72h |
| 5 | 1.2.2 | 上台连麦 | manual | 3d | 2019-08-30 | 2019-09-03 |  | 黄世泉 | 24h |
| 6 | 1.2.3 | 红包雨 | manual | 3d | 2019-08-30 | 2019-09-03 |  | 陈藏宝 | 24h |
| 7 | 1.2.4 | 奖杯 | manual | 3d | 2019-08-30 | 2019-09-03 |  | 阳海峰 | 24h |
| 8 | 1.2.5 | 联调 | manual | 1d | 2019-09-04 | 2019-09-04 |  | 梅雨; 代运超; 张骞; 赵亚; 黄世泉; 陈藏宝; 阳海峰 | 56h |
| 9 | 1.3 | **教室布局** |  | 5d | 2019-08-31 | 2019-09-07 | 0d |  | 72h |
| 10 | 1.3.1 | PRD/UI | manual | 2d | 2019-08-31 | 2019-09-02 |  | 赵灵汉; 陈超; 王正然 | 48h |
| 11 | 1.3.2 | 教室布局重构 | manual | 3d | 2019-09-05 | 2019-09-07 |  | 阳海峰 | 24h |
| 12 | 1.4 | **IM** |  | 5d | 2019-08-30 | 2019-09-06 | 0d |  | 320h |
| 13 | 1.4.1 | PRD/UI | manual | 2d | 2019-09-03 | 2019-09-04 |  | 赵灵汉; 陈超; 王正然 | 48h |
| 14 | 1.4.2 | 输入 | manual | 5d | 2019-08-30 | 2019-09-05 |  | 杨凯毅; 黄世泉 | 80h |
| 15 | 1.4.3 | 发言管理 | manual | 5d | 2019-08-30 | 2019-09-05 |  | 杨凯毅; 黄世泉 | 80h |
| 16 | 1.4.4 | 聊天消息 | manual | 5d | 2019-08-30 | 2019-09-05 |  | 杨凯毅; 黄世泉 | 80h |
| 17 | 1.4.5 | 联调 | manual | 1d | 2019-09-05 | 2019-09-06 |  | 杨凯毅; 黄世泉; 代运超; 梅雨 | 32h |
| 18 | 1.5 | **学员管理** |  | 5.88d | 2019-09-05 | 2019-09-12 | 0d |  | 104h |
| 19 | 1.5.1 | PRD/UI | manual | 1d | 2019-09-05 | 2019-09-05 |  | 赵灵汉; 陈超; 王正然 | 24h |
| 20 | 1.5.2 | 花名册 | manual | 2d | 2019-09-09 | 2019-09-10 |  | 陈藏宝; 阳海峰 | 32h |
| 21 | 1.5.3 | 举手学员列表 | manual | 2d | 2019-09-10 | 2019-09-11 |  | 陈藏宝; 阳海峰 | 32h |
| 22 | 1.5.4 | 联调 | manual | 1d | 2019-09-12 | 2019-09-12 |  | 陈藏宝; 阳海峰 | 16h |
| 23 | 1.6 | **教学工具** |  | 6.88d | 2019-09-06 | 2019-09-16 | 0d |  | 272h |
| 24 | 1.6.1 | PRD/UI | manual | 2d | 2019-09-06 | 2019-09-07 |  | 赵灵汉; 陈超; 王正然 | 48h |
| 25 | 1.6.2 | 画笔 | manual | 3d | 2019-09-12 | 2019-09-15 |  | 陈藏宝; 阳海峰 | 48h |
| 26 | 1.6.3 | 橡皮擦 | manual | 3d | 2019-09-12 | 2019-09-15 |  | 陈藏宝; 阳海峰 | 48h |
| 27 | 1.6.4 | 计时器 | manual | 3d | 2019-09-12 | 2019-09-15 |  | 陈藏宝; 阳海峰 | 48h |
| 28 | 1.6.5 | 答题器 | manual | 3d | 2019-09-12 | 2019-09-15 |  | 陈藏宝; 阳海峰 | 48h |
| 29 | 1.6.6 | 联调 | manual | 1d | 2019-09-16 | 2019-09-16 |  | 陈藏宝; 阳海峰; 梅雨; 赵亚 | 32h |

Notes:
- 7: 该功能现已有

| ID | WBS | Task | Type | Duration | Start | Finish | Total slack | Resources | Work |
| --- | --- | --- | --- | --- | --- | --- | --- | --- | --- |
| 30 | 1.7 | **课堂管理** |  | 4.88d | 2019-09-10 | 2019-09-16 | 0d |  | 48h |
| 31 | 1.7.1 | PRD/UI | manual | 1d | 2019-09-10 | 2019-09-10 |  | 赵灵汉; 陈超; 王正然 | 24h |
| 32 | 1.7.2 | 开始上课 | manual | 1d | 2019-09-16 | 2019-09-16 |  | 阳海峰 | 8h |
| 33 | 1.7.3 | 中途离席 | manual | 1d | 2019-09-16 | 2019-09-16 |  | 阳海峰 | 8h |
| 34 | 1.7.4 | 下课 | manual | 1d | 2019-09-16 | 2019-09-16 |  | 阳海峰 | 8h |
| 35 | 1.8 | **课件应用** |  | 5.88d | 2019-09-09 | 2019-09-16 | 0d |  | 216h |
| 36 | 1.8.1 | PRD/UI | manual | 2d | 2019-09-11 | 2019-09-12 |  | 赵灵汉; 陈超; 王正然 | 48h |
| 37 | 1.8.2 | h5课件 | manual | 6d | 2019-09-09 | 2019-09-15 |  | 黄世泉 | 48h |
| 38 | 1.8.3 | pdf课件 | manual | 6d | 2019-09-09 | 2019-09-15 |  | 黄世泉 | 48h |
| 39 | 1.8.4 | 流媒体课件 | manual | 6d | 2019-09-09 | 2019-09-15 |  | 黄世泉 | 48h |
| 40 | 1.8.5 | 联调 | manual | 1d | 2019-09-16 | 2019-09-16 |  | 代运超; 张骞; 黄世泉 | 24h |
| 41 | 1.9 | **音视频画面** |  | 3d | 2019-09-15 | 2019-09-18 | 0d |  | 69h |
| 42 | 1.9.1 | PRD/UI | manual | 1d | 2019-09-15 | 2019-09-15 |  | 赵灵汉; 陈超; 王正然 | 24h |
| 43 | 1.9.2 | 音视频画面 | manual | 1.88d | 2019-09-17 | 2019-09-18 |  | 黄世泉 | 15h |
| 44 | 1.9.3 | 摄像头 | manual | 1.88d | 2019-09-17 | 2019-09-18 |  | 黄世泉 | 15h |
| 45 | 1.9.4 | 麦克风 | manual | 1.88d | 2019-09-17 | 2019-09-18 |  | 黄世泉 | 15h |
| 46 | 1.10 | **录播回看** |  | 4.88d | 2019-09-16 | 2019-09-20 | 0d |  | 112h |
| 47 | 1.10.1 | PRD/UI | manual | 2d | 2019-09-16 | 2019-09-17 |  | 赵灵汉; 陈超; 王正然 | 48h |
| 48 | 1.10.2 | 录播回看 | manual | 4d | 2019-09-17 | 2019-09-20 |  | 陈藏宝; 阳海峰 | 64h |
| 50 | 2 | **班主任端** |  | 15.88d | 2019-08-30 | 2019-09-20 | 0d |  | 813h |
| 51 | 2.1 | **IM** |  | 5d | 2019-08-30 | 2019-09-06 | 0d |  | 320h |
| 52 | 2.1.1 | PRD/UI | manual | 2d | 2019-09-03 | 2019-09-04 |  | 赵灵汉; 陈超; 王正然 | 48h |
| 53 | 2.1.2 | 输入 | manual | 5d | 2019-08-30 | 2019-09-05 |  | 杨凯毅; 黄世泉 | 80h |
| 54 | 2.1.3 | 发言管理 | manual | 5d | 2019-08-30 | 2019-09-05 |  | 杨凯毅; 黄世泉 | 80h |
| 55 | 2.1.4 | 聊天消息 | manual | 5d | 2019-08-30 | 2019-09-05 |  | 杨凯毅; 黄世泉 | 80h |
| 56 | 2.1.5 | 联调 | manual | 1d | 2019-09-05 | 2019-09-06 |  | 杨凯毅; 黄世泉; 代运超; 梅雨 | 32h |

| ID | WBS | Task | Type | Duration | Start | Finish | Total slack | Resources | Work |
| --- | --- | --- | --- | --- | --- | --- | --- | --- | --- |
| 57 | 2.2 | **学员管理** |  | 5.88d | 2019-09-05 | 2019-09-12 | 0d |  | 104h |
| 58 | 2.2.1 | PRD/UI | manual | 1d | 2019-09-05 | 2019-09-05 |  | 赵灵汉; 陈超; 王正然 | 24h |
| 59 | 2.2.2 | 花名册 | manual | 2d | 2019-09-09 | 2019-09-10 |  | 陈藏宝; 阳海峰 | 32h |
| 60 | 2.2.3 | 举手学员列表 | manual | 2d | 2019-09-10 | 2019-09-11 |  | 陈藏宝; 阳海峰 | 32h |
| 61 | 2.2.4 | 联调 | manual | 1d | 2019-09-12 | 2019-09-12 |  | 陈藏宝; 阳海峰 | 16h |
| 62 | 2.3 | **教学工具** |  | 6.88d | 2019-09-06 | 2019-09-16 | 0d |  | 208h |
| 63 | 2.3.1 | PRD/UI | manual | 2d | 2019-09-06 | 2019-09-07 |  | 赵灵汉; 陈超; 王正然 | 48h |
| 64 | 2.3.2 | 画笔 | manual | 3d | 2019-09-12 | 2019-09-15 |  | 陈藏宝; 阳海峰 | 48h |
| 65 | 2.3.3 | 计时器 | manual | 3d | 2019-09-12 | 2019-09-15 |  | 陈藏宝; 阳海峰 | 48h |
| 66 | 2.3.4 | 答题器 | manual | 3d | 2019-09-12 | 2019-09-15 |  | 陈藏宝; 阳海峰 | 48h |
| 67 | 2.3.5 | 联调 | manual | 1d | 2019-09-16 | 2019-09-16 |  | 陈藏宝; 阳海峰 | 16h |
| 68 | 2.4 | **音视频** |  | 3d | 2019-09-15 | 2019-09-18 | 0d |  | 69h |
| 69 | 2.4.1 | PRD/UI | manual | 1d | 2019-09-15 | 2019-09-15 |  | 赵灵汉; 陈超; 王正然 | 24h |
| 70 | 2.4.2 | 音视频画面 | manual | 1.88d | 2019-09-17 | 2019-09-18 |  | 黄世泉 | 15h |
| 71 | 2.4.3 | 摄像头 | manual | 1.88d | 2019-09-17 | 2019-09-18 |  | 黄世泉 | 15h |
| 72 | 2.4.4 | 麦克风 | manual | 1.88d | 2019-09-17 | 2019-09-18 |  | 黄世泉 | 15h |
| 73 | 2.5 | **录播回看** |  | 4.88d | 2019-09-16 | 2019-09-20 | 0d |  | 112h |
| 74 | 2.5.1 | PRD/UI | manual | 2d | 2019-09-16 | 2019-09-17 |  | 赵灵汉; 陈超; 王正然 | 48h |
| 75 | 2.5.2 | 录播回看 | manual | 4d | 2019-09-17 | 2019-09-20 |  | 陈藏宝; 阳海峰 | 64h |
| 77 | 3 | **学生端** |  | 16.88d | 2019-08-29 | 2019-09-21 | 0d |  | 1732h |
| 78 | 3.1 | IOS依赖包处理 | manual | 3d | 2019-08-29 | 2019-08-31 |  | 张骞 | 24h |
| 79 | 3.2 | **互动工具** |  | 3.88d | 2019-08-30 | 2019-09-04 | 0d |  | 200h |
| 80 | 3.2.1 | 上台连麦 | manual | 3d | 2019-08-30 | 2019-09-03 |  | 梅雨; 代运超 | 48h |
| 81 | 3.2.2 | 奖杯 | manual | 3d | 2019-08-30 | 2019-09-03 |  | 梅雨; 代运超 | 48h |
| 82 | 3.2.3 | 红包雨 | manual | 3d | 2019-08-30 | 2019-09-03 |  | 张骞; 赵亚 | 48h |
| 83 | 3.2.4 | 联调 | manual | 1d | 2019-09-04 | 2019-09-04 |  | 梅雨; 代运超; 张骞; 赵亚; 黄世泉; 陈藏宝; 阳海峰 | 56h |

| ID | WBS | Task | Type | Duration | Start | Finish | Total slack | Resources | Work |
| --- | --- | --- | --- | --- | --- | --- | --- | --- | --- |
| 84 | 3.3 | **教室布局** |  | 3.88d | 2019-09-03 | 2019-09-07 | 0d |  | 72h |
| 85 | 3.3.1 | PRD/UI | manual | 1d | 2019-09-03 | 2019-09-03 |  | 赵灵汉; 陈超; 王正然 | 24h |
| 86 | 3.3.2 | 教室布局重构 | manual | 3d | 2019-09-05 | 2019-09-07 |  | 张骞; 赵亚 | 48h |
| 87 | 3.4 | **IM** |  | 5.88d | 2019-08-30 | 2019-09-07 | 0d |  | 328h |
| 88 | 3.4.1 | PRD/UI | manual | 1d | 2019-09-04 | 2019-09-04 |  | 赵灵汉; 陈超; 王正然 | 24h |
| 89 | 3.4.2 | 输入 | manual | 5d | 2019-08-30 | 2019-09-05 |  | 杨凯毅; 代运超; 梅雨 | 120h |
| 90 | 3.4.3 | 聊天消息 | manual | 5d | 2019-08-30 | 2019-09-05 |  | 杨凯毅; 代运超; 梅雨 | 120h |
| 91 | 3.4.4 | 联调 | manual | 2d | 2019-09-06 | 2019-09-07 |  | 杨凯毅; 黄世泉; 代运超; 梅雨 | 64h |
| 92 | 3.5 | SDK封装 | manual | 2d | 2019-09-07 | 2019-09-09 |  | 赵亚; 张骞; 陈藏宝 | 48h |
| 93 | 3.6 | **教学工具** |  | 5.88d | 2019-09-09 | 2019-09-16 | 0d |  | 248h |
| 94 | 3.6.1 | PRD/UI | manual | 1d | 2019-09-09 | 2019-09-09 |  | 赵灵汉; 陈超; 王正然 | 24h |
| 95 | 3.6.2 | 画笔 | manual | 4d | 2019-09-09 | 2019-09-12 |  | 梅雨; 赵亚 | 64h |
| 96 | 3.6.3 | 计时器 | manual | 4d | 2019-09-09 | 2019-09-12 |  | 梅雨; 赵亚 | 64h |
| 97 | 3.6.4 | 答题器 | manual | 4d | 2019-09-09 | 2019-09-12 |  | 梅雨; 赵亚 | 64h |
| 98 | 3.6.5 | 联调 | manual | 1d | 2019-09-16 | 2019-09-16 |  | 陈藏宝; 阳海峰; 梅雨; 赵亚 | 32h |
| 99 | 3.7 | **课件应用** |  | 5.88d | 2019-09-09 | 2019-09-16 | 0d |  | 360h |
| 100 | 3.7.1 | PRD/UI | manual | 2d | 2019-09-11 | 2019-09-12 |  | 赵灵汉; 陈超; 王正然 | 48h |
| 101 | 3.7.2 | h5课件 | manual | 6d | 2019-09-09 | 2019-09-15 |  | 代运超; 张骞 | 96h |
| 102 | 3.7.3 | pdf课件 | manual | 6d | 2019-09-09 | 2019-09-15 |  | 代运超; 张骞 | 96h |
| 103 | 3.7.4 | 流媒体课件 | manual | 6d | 2019-09-09 | 2019-09-15 |  | 代运超; 张骞 | 96h |
| 104 | 3.7.5 | 联调 | manual | 1d | 2019-09-16 | 2019-09-16 |  | 代运超; 张骞; 黄世泉 | 24h |
| 105 | 3.8 | **音视频** |  | 2d | 2019-09-15 | 2019-09-17 | 0d |  | 116h |
| 106 | 3.8.1 | PRD/UI | manual | 1d | 2019-09-15 | 2019-09-15 |  | 赵灵汉; 陈超; 王正然 | 24h |
| 107 | 3.8.2 | 音视频画面 | manual | 2d | 2019-09-16 | 2019-09-17 |  | 代运超; 梅雨 | 32h |
| 108 | 3.8.3 | 摄像头 | manual | 2d | 2019-09-16 | 2019-09-17 |  | 代运超; 梅雨 | 30h |
| 109 | 3.8.4 | 麦克风 | manual | 2d | 2019-09-16 | 2019-09-17 |  | 代运超; 梅雨 | 30h |

| ID | WBS | Task | Type | Duration | Start | Finish | Total slack | Resources | Work |
| --- | --- | --- | --- | --- | --- | --- | --- | --- | --- |
| 110 | 3.9 | **录播回看** |  | 4.88d | 2019-09-16 | 2019-09-20 | 0d |  | 112h |
| 111 | 3.9.1 | PRD/UI | manual | 2d | 2019-09-16 | 2019-09-17 |  | 赵灵汉; 陈超; 王正然 | 48h |
| 112 | 3.9.2 | 录播回看 | manual | 4d | 2019-09-17 | 2019-09-20 |  | 代运超; 张骞 | 64h |
| 113 | 3.10 | **用户信息展示** |  | 1.88d | 2019-09-17 | 2019-09-18 | 0d |  | 56h |
| 114 | 3.10.1 | PRD/UI | manual | 1d | 2019-09-17 | 2019-09-17 |  | 赵灵汉; 陈超; 王正然 | 24h |
| 115 | 3.10.2 | 积分 | manual | 1d | 2019-09-18 | 2019-09-18 |  | 赵亚; 梅雨 | 16h |
| 116 | 3.10.3 | 奖杯 | manual | 1d | 2019-09-18 | 2019-09-18 |  | 赵亚; 梅雨 | 16h |
| 117 | 3.11 | **教室状态** |  | 2.88d | 2019-09-18 | 2019-09-20 | 0d |  | 96h |
| 118 | 3.11.1 | PRD/UI | manual | 2d | 2019-09-19 | 2019-09-20 |  | 赵灵汉; 陈超; 王正然 | 48h |
| 119 | 3.11.2 | 教室状态 | manual | 2d | 2019-09-18 | 2019-09-20 |  | 赵亚; 梅雨; 黄世泉 | 48h |
| 120 | 3.12 | **设备检测** |  | 2.88d | 2019-09-18 | 2019-09-21 | 0d |  | 72h |
| 121 | 3.12.1 | PRD/UI | manual | 2d | 2019-09-18 | 2019-09-19 |  | 赵灵汉; 陈超; 王正然 | 48h |
| 122 | 3.12.2 | 设备检测 | manual | 1d | 2019-09-21 | 2019-09-21 |  | 代运超; 梅雨; 阳海峰 | 24h |
| 124 | 4 | **服务端** |  | 17.88d | 2019-08-30 | 2019-09-24 | 0d |  | 448h |
| 125 | 4.1 | 信令开发 | manual | 3d | 2019-08-30 | 2019-09-03 |  | 江乐兵; 宋高飞 | 48h |
| 126 | 4.2 | httpservice服务器拆分 | manual | 2d | 2019-09-04 | 2019-09-05 |  | 江乐兵; 宋高飞 | 32h |
| 127 | 4.3 | 路由信息设计 | manual | 2d | 2019-09-06 | 2019-09-07 |  | 江乐兵; 宋高飞 | 32h |
| 128 | 4.4 | 构建kafka服务 | manual | 1d | 2019-09-09 | 2019-09-09 |  | 江乐兵; 宋高飞 | 16h |
| 129 | 4.5 | kafka接入边缘 | manual | 5d | 2019-09-10 | 2019-09-15 |  | 江乐兵; 宋高飞 | 80h |
| 130 | 4.6 | kafka接入核心 | manual | 5d | 2019-09-10 | 2019-09-15 |  | 江乐兵; 宋高飞 | 80h |
| 131 | 4.7 | 去掉UDP服务 | manual | 2d | 2019-09-10 | 2019-09-11 |  | 江乐兵; 宋高飞 | 32h |
| 132 | 4.8 | enterroom改造 | manual | 2d | 2019-09-16 | 2019-09-17 |  | 江乐兵; 宋高飞 | 32h |
| 133 | 4.9 | 红包统计功能 | manual | 3d | 2019-09-18 | 2019-09-20 |  | 江乐兵; 宋高飞 | 48h |
| 134 | 4.10 | 答题统计功能 | manual | 3d | 2019-09-21 | 2019-09-24 |  | 江乐兵; 宋高飞 | 48h |

Notes:
- 119: 放到重构布局处

| ID | WBS | Task | Type | Duration | Start | Finish | Total slack | Resources | Work |
| --- | --- | --- | --- | --- | --- | --- | --- | --- | --- |
| 136 | 5 | **API模块** |  | 15.88d | 2019-08-30 | 2019-09-21 | 0d |  | 288h |
| 137 | 5.1 | 一期-教室相关 | manual | 6d | 2019-08-30 | 2019-09-06 |  | 陈东东; 史安良 | 96h |
| 138 | 5.2 | 联调 | manual | 1d? | 2019-08-30 | 2019-09-02 |  |  |  |
| 139 | 5.3 | 测试 | manual | 1d? | 2019-08-30 | 2019-09-02 |  |  |  |
| 140 | 5.4 | 二期-课件相关 | manual | 5d | 2019-09-07 | 2019-09-12 |  | 陈东东; 史安良 | 80h |
| 141 | 5.5 | 联调 | manual | 1d? | 2019-08-30 | 2019-09-02 |  |  |  |
| 142 | 5.6 | 测试 | manual | 1d? | 2019-08-30 | 2019-09-02 |  |  |  |
| 143 | 5.7 | 三期-录播 | manual | 2d | 2019-09-15 | 2019-09-16 |  | 陈东东; 史安良 | 32h |
| 144 | 5.8 | 联调 | manual | 1d? | 2019-08-30 | 2019-09-02 |  |  |  |
| 145 | 5.9 | 测试 | manual | 1d? | 2019-08-30 | 2019-09-02 |  |  |  |
| 146 | 5.10 | 四期-工具相关 | manual | 5d | 2019-09-17 | 2019-09-21 |  | 陈东东; 史安良 | 80h |
| 147 | 5.11 | 联调 | manual | 1d? | 2019-08-30 | 2019-09-02 |  |  |  |
| 148 | 5.12 | 测试 | manual | 1d? | 2019-08-30 | 2019-09-02 |  |  |  |

Notes:
- 137: 1.教室管理-对接巨人 2.客户端-进入教室、服务器获取 3.socket-课程结束判断、通知，上下课机制
- 140: 1.H5课件-巨人对接 2.素材-巨人对接 3.客户端-云盘
- 143: 1.回调-巨人对接 2.查看录播-客户端对接、socket对接 3.IP优选
- 146: 花名册、举手、课堂质量、红包雨、奖杯、答题器
